# 项目管理

Schedule from MS Project, 2020-11-09 to 2020-12-22.

## Calendars

- 标准: Mon-Fri 08:00-12:00, 13:00-17:00; Sat-Sun off.

## Resources

| Resource | Notes |
| --- | --- |
| 谢婉琴 | 项目经理 程序员 |
| 田文秀 | UI专家 程序员 |
| 孟旭颖 | 设计专家 程序员 |
| 张荣 | 需求专家 程序员 |
| 刘雨宣 | 质量专家 程序员 |
| 李佳宁 | 测试员 程序员 |

## Schedule

| ID | WBS | Task | Type | Duration | Start | Finish | Predecessors | Total slack | Resources | Work |
| --- | --- | --- | --- | --- | --- | --- | --- | --- | --- | --- |
| 1 | 1 | **启动** |  | 3d | 2020-11-09 | 2020-11-11 |  |  |  | 136h |
| 2 | 1.1 | 组建核心团队 | manual | 1d | 2020-11-09 | 2020-11-09 |  |  | 田文秀; 孟旭颖; 张荣; 刘雨宣; 谢婉琴; 李佳宁 | 48h |
| 3 | 1.2 | 干系人分析 | manual | 1d | 2020-11-09 | 2020-11-09 |  |  | 谢婉琴 | 8h |
| 4 | 1.3 | 里程碑计划 | manual | 1d | 2020-11-09 | 2020-11-09 |  |  | 谢婉琴 | 8h |
| 5 | 1.4 | 制定项目章程 | manual | 1d | 2020-11-10 | 2020-11-10 | 2, 3, 4 |  | 田文秀; 孟旭颖; 谢婉琴; 张荣 | 32h |
| 6 | 1.5 | 项目启动大会 | manual | 1d | 2020-11-11 | 2020-11-11 | 5 |  | 刘雨宣; 孟旭颖; 田文秀; 谢婉琴; 张荣 | 40h |
| 7 | 2 | **规划** |  | 18d | 2020-11-12 | 2020-12-07 |  | 0d |  | 200h |
| 8 | 2.1 | **规划范围** |  | 4d | 2020-11-12 | 2020-11-17 |  |  |  | 48h |
| 9 | 2.1.1 | 制定需求说明书 | manual | 1d | 2020-11-12 | 2020-11-12 | 6 |  | 张荣 | 8h |
| 10 | 2.1.2 | 界面设计 | manual | 1d | 2020-11-13 | 2020-11-13 | 9 |  | 田文秀 | 8h |
| 11 | 2.1.3 | 详细设计说明书 | manual | 1d | 2020-11-13 | 2020-11-13 | 9 |  | 孟旭颖 | 8h |
| 12 | 2.1.4 | 项目范围说明书 | manual | 1d | 2020-11-13 | 2020-11-13 | 9 |  | 谢婉琴 | 8h |
| 13 | 2.1.5 | 创建WBS | manual | 1d | 2020-11-16 | 2020-11-16 | 10, 11, 12 |  | 谢婉琴 | 8h |
| 14 | 2.1.6 | 形成范围基准 | manual | 1d | 2020-11-17 | 2020-11-17 | 13 |  | 谢婉琴 | 8h |
| 15 | 2.2 | **规划时间** |  | 5d | 2020-11-18 | 2020-11-24 |  |  |  | 40h |
| 16 | 2.2.1 | 排列工作包顺序 | manual | 1d | 2020-11-18 | 2020-11-18 | 14 |  | 谢婉琴 | 8h |
| 17 | 2.2.2 | 估算资源 | manual | 1d | 2020-11-19 | 2020-11-19 | 16 |  | 谢婉琴 | 8h |
| 18 | 2.2.3 | 估算持续时间 | manual | 1d | 2020-11-20 | 2020-11-20 | 17 |  | 谢婉琴 | 8h |
| 19 | 2.2.4 | 制定进度计划 | manual | 1d | 2020-11-23 | 2020-11-23 | 18 |  | 谢婉琴 | 8h |
| 20 | 2.2.5 | 形成进度基准 | manual | 1d | 2020-11-24 | 2020-11-24 | 19 |  | 谢婉琴 | 8h |
| 21 | 2.3 | **规划成本** |  | 3d | 2020-11-25 | 2020-11-27 |  |  |  | 24h |
| 22 | 2.3.1 | 项目成本估算 | manual | 1d | 2020-11-25 | 2020-11-25 | 20 |  | 谢婉琴 | 8h |
| 23 | 2.3.2 | 项目预算 | manual | 1d | 2020-11-26 | 2020-11-26 | 22 |  | 谢婉琴 | 8h |
| 24 | 2.3.3 | 形成范围基准 | manual | 1d | 2020-11-27 | 2020-11-27 | 23 |  | 谢婉琴 | 8h |

| ID | WBS | Task | Type | Duration | Start | Finish | Predecessors | Total slack | Resources | Work |
| --- | --- | --- | --- | --- | --- | --- | --- | --- | --- | --- |
| 25 | 2.4 | **规划质量** |  | 2d | 2020-11-30 | 2020-12-01 |  | 0d |  | 16h |
| 26 | 2.4.1 | 制定测试计划 | manual | 1d | 2020-11-30 | 2020-11-30 | 24 |  | 刘雨宣 | 8h |
| 27 | 2.4.2 | 制定测试用例 | manual | 1d | 2020-12-01 | 2020-12-01 | 26 |  | 刘雨宣 | 8h |
| 28 | 2.5 | **规划人力资源** |  | 2d | 2020-11-18 | 2020-11-19 |  |  |  | 16h |
| 29 | 2.5.1 | 制定人力资源计划 | manual | 1d | 2020-11-18 | 2020-11-18 | 14 |  | 谢婉琴 | 8h |
| 30 | 2.5.2 | 制定人员配备管理计划 | manual | 1d | 2020-11-19 | 2020-11-19 | 29 |  | 谢婉琴 | 8h |
| 31 | 2.6 | **规划沟通** |  | 1d | 2020-11-20 | 2020-11-20 |  |  |  | 8h |
| 32 | 2.6.1 | 制定沟通管理计划 | manual | 1d | 2020-11-20 | 2020-11-20 | 30 |  | 谢婉琴 | 8h |
| 33 | 2.7 | **规划采购** |  | 2d | 2020-11-18 | 2020-11-19 |  |  |  | 16h |
| 34 | 2.7.1 | 自制外购分析 | manual | 1d | 2020-11-18 | 2020-11-18 | 14 |  | 谢婉琴 | 8h |
| 35 | 2.7.2 | 制定采购文件 | manual | 1d | 2020-11-19 | 2020-11-19 | 29 |  | 谢婉琴 | 8h |
| 36 | 2.8 | **规划风险** |  | 3d | 2020-12-02 | 2020-12-04 |  | 0d |  | 24h |
| 37 | 2.8.1 | 识别风险 | manual | 1d | 2020-12-02 | 2020-12-02 | 15, 21, 28, 25 |  | 谢婉琴 | 8h |
| 38 | 2.8.2 | 风险分析 | manual | 1d | 2020-12-03 | 2020-12-03 | 37 |  | 谢婉琴 | 8h |
| 39 | 2.8.3 | 制定风险登记册 | manual | 1d | 2020-12-04 | 2020-12-04 | 38 |  | 谢婉琴 | 8h |
| 40 | 2.9 | 规划整合 | manual | 1d | 2020-12-07 | 2020-12-07 | 39 |  | 谢婉琴 | 8h |
| 41 | 3 | **执行与监控** |  | 9d | 2020-12-09 | 2020-12-21 |  |  |  | 472h |
| 42 | 3.1 | 组建团队项目 | manual | 1d | 2020-12-08 | 2020-12-08 | 40 |  | 李佳宁; 谢婉琴 | 16h |
| 43 | 3.2 | **项目执行** |  | 7d | 2020-12-10 | 2020-12-18 |  |  |  | 112h |
| 44 | 3.2.1 | **用户模块** |  | 7d | 2020-12-10 | 2020-12-18 |  |  |  | 64h |
| 45 | 3.2.1.1 | 注册登录 | manual | 1d | 2020-12-10 | 2020-12-10 | 42 |  | 刘雨宣 | 8h |
| 46 | 3.2.1.2 | 音乐播放 | manual | 1d | 2020-12-11 | 2020-12-11 | 42 |  | 李佳宁 | 8h |
| 47 | 3.2.1.3 | 题库信息 | manual | 1d | 2020-12-12 | 2020-12-12 | 42 |  | 孟旭颖 | 8h |
| 48 | 3.2.1.4 | 学校信息搜索 | manual | 1d | 2020-12-13 | 2020-12-13 | 42 |  | 田文秀 | 8h |
| 49 | 3.2.1.5 | 个人信息设置 | manual | 1d | 2020-12-14 | 2020-12-14 | 42 |  | 刘雨宣; 谢婉琴 | 16h |
| 50 | 3.2.1.6 | 首页 | manual | 1d | 2020-12-11 | 2020-12-11 | 45 |  | 刘雨宣 | 8h |
| 51 | 3.2.1.7 | 计划表 | manual | 1d | 2020-12-16 | 2020-12-16 | 42 |  | 张荣 | 8h |

| ID | WBS | Task | Type | Duration | Start | Finish | Predecessors | Resources | Work |
| --- | --- | --- | --- | --- | --- | --- | --- | --- | --- |
| 52 | 3.2.2 | **管理员模块** |  | 5d | 2020-12-10 | 2020-12-16 |  |  | 48h |
| 53 | 3.2.2.1 | 用户管理 | manual | 1d | 2020-12-11 | 2020-12-11 | 45 | 谢婉琴 | 8h |
| 54 | 3.2.2.2 | 音乐管理 | manual | 1d | 2020-12-14 | 2020-12-14 | 46 | 李佳宁 | 8h |
| 55 | 3.2.2.3 | 题库更新维护 | manual | 1d | 2020-12-14 | 2020-12-14 | 47 | 孟旭颖 | 8h |
| 56 | 3.2.2.4 | 学校信息更新维护 | manual | 1d | 2020-12-14 | 2020-12-14 | 48 | 田文秀 | 8h |
| 57 | 3.2.2.5 | 个性装扮管理 | manual | 1d | 2020-12-15 | 2020-12-15 | 49 | 刘雨宣 | 8h |
| 58 | 3.2.2.6 | 备份 | manual | 1d | 2020-12-16 | 2020-12-16 | 50 | 谢婉琴 | 8h |
| 59 | 3.3 | **项目监控** |  | 3d | 2020-12-17 | 2020-12-19 |  |  | 128h |
| 60 | 3.3.1 | 各项指标监控 | manual | 1d | 2020-12-10 | 2020-12-10 | 42 | 李佳宁; 谢婉琴 | 16h |
| 61 | 3.3.2 | 监控审评 | manual | 1d | 2020-12-11 | 2020-12-11 | 60 | 孟旭颖; 谢婉琴; 张荣; 刘雨宣 | 32h |
| 62 | 3.3.3 | 变更审评 | manual | 1d | 2020-12-14 | 2020-12-14 | 61 | 孟旭颖; 谢婉琴; 张荣; 刘雨宣 | 32h |
| 63 | 3.3.4 | 例会 | manual | 1d | 2020-12-18 | 2020-12-18 | 42 | 田文秀; 李佳宁; 孟旭颖; 谢婉琴; 张荣; 刘雨宣 | 48h |
| 64 | 3.4 | **管理干系人** |  | 1d | 2020-12-20 | 2020-12-20 |  |  | 24h |
| 65 | 3.4.1 | 发布项目信息 | manual | 1d | 2020-12-10 | 2020-12-10 | 42 | 谢婉琴 | 8h |
| 66 | 3.4.2 | 报告监控指标 | manual | 1d | 2020-12-11 | 2020-12-11 | 42 | 谢婉琴 | 8h |
| 67 | 3.4.3 | 干系人沟通 | manual | 1d | 2020-12-14 | 2020-12-14 | 42 | 谢婉琴 | 8h |
| 68 | 3.5 | **团建活动** |  | 1d? | 2020-12-17 | 2020-12-17 |  |  | 144h |
| 69 | 3.5.1 | 培训 | manual | 1d | 2020-12-17 | 2020-12-17 | 42 | 田文秀; 李佳宁; 孟旭颖; 谢婉琴; 张荣; 刘雨宣 | 48h |
| 70 | 3.5.2 | 娱乐活动 | manual | 1d | 2020-12-17 | 2020-12-17 | 42 | 田文秀; 李佳宁; 孟旭颖; 谢婉琴; 张荣; 刘雨宣 | 48h |
| 71 | 3.5.3 | 沟通 | manual | 1d | 2020-12-17 | 2020-12-17 | 42 | 田文秀; 李佳宁; 孟旭颖; 谢婉琴; 张荣; 刘雨宣 | 48h |
| 72 | 3.6 | 采购 | manual | 1d | 2020-12-10 | 2020-12-10 | 42 | 谢婉琴 | 8h |
| 73 | 3.7 | 项目验收 | manual | 1d | 2020-12-21 | 2020-12-21 | 43 | 田文秀; 孟旭颖; 谢婉琴; 张荣; 刘雨宣 | 40h |
| 74 | 4 | **收尾** |  | 1d | 2020-12-22 | 2020-12-22 |  |  | 96h |
| 75 | 4.1 | 项目终验 | manual | 1d | 2020-12-22 | 2020-12-22 | 73 | 田文秀; 孟旭颖; 谢婉琴; 张荣; 刘雨宣 | 40h |
| 76 | 4.2 | 结束采购 | manual | 1d | 2020-12-22 | 2020-12-22 | 73 | 谢婉琴 | 8h |
| 77 | 4.3 | 项目内部收尾 | manual | 1d | 2020-12-22 | 2020-12-22 | 73 | 田文秀; 李佳宁; 孟旭颖; 谢婉琴; 张荣; 刘雨宣 | 48h |
